# Proyect1

Schedule from MS Project, 2010-10-04 to 2010-11-14, status date 2010-10-07, 24 hours a day.

## Calendars

- PIS-Interpool: Mon-Sun 00:00-24:00.

## Resources

| Resource | Group |
| --- | --- |
| Alejandro García | Verificación |
| Diego Ricca | Analistas |
| Federico Andrade | Esp. Técnico |
| Federico Trinidad | Esp. Técnico |
| Ignacio Infante | Esp. Técnico |
| Javier Madeiro | SQA |
| José Cordero | GUI |
| Juan Ghiringhelli | Administrador |
| Leticia Vilariño | GUI |
| Marcos Sander | Arquitecto |
| Martín Taruselli | Analistas |
| Vicente Acosta | SCM |

## Schedule

| ID | WBS | Task | Duration | Start | Finish | Predecessors | Total slack | Free slack | Constraint | Resources | Work |
| --- | --- | --- | --- | --- | --- | --- | --- | --- | --- | --- | --- |
| 1 | 1 | **Fase construcción** | 33.67d? | 2010-10-04 09:00 | 2010-11-07 01:00 |  | 6d | 0d |  |  | 388h |
| 2 | 1.1 | **Iteración 1** | 12.67d? | 2010-10-04 09:00 | 2010-10-17 01:00 |  | 25.92d | 0d |  |  | 168h |
| 3 | 1.1.1 | **Semana 09** | 5.62d? | 2010-10-04 09:00 | 2010-10-10 00:00 |  | 31.96d | 0d |  |  | 79h |
| 4 | 1.1.1.1 | Reunión con el Director | 1h? | 2010-10-05 00:00 | 2010-10-05 01:00 |  | 36.92d |  | start no earlier than 2010-10-05 00:00 | Alejandro García; Diego Ricca; Federico Andrade; Federico Trinidad; Ignacio Infante; Javier Madeiro; José Cordero; Juan Ghiringhelli; Leticia Vilariño; Marcos Sander; Martín Taruselli; Vicente Acosta | 12h |
| 5 | 1.1.1.2 | Diseño / Implementación | 1d? | 2010-10-04 09:00 | 2010-10-05 09:00 |  | 36.58d |  |  |  |  |
| 6 | 1.1.1.3 | Verificación | 1d? | 2010-10-04 09:00 | 2010-10-05 09:00 |  | 36.58d |  |  |  |  |
| 7 | 1.1.1.4 | Gestión del Proyecto | 1d? | 2010-10-04 09:00 | 2010-10-05 09:00 |  | 36.58d |  |  |  |  |
| 8 | 1.1.1.5 | **Gestión de la Calidad** | 0.52d? | 2010-10-04 09:00 | 2010-10-04 21:30 |  | 37.06d |  |  |  | 21h |
| 9 | 1.1.1.5.1 | **RTF Planificación del Proyecto** | 0.19d? | 2010-10-04 09:00 | 2010-10-04 13:30 |  | 37.06d |  |  |  | 9h |
| 10 | 1.1.1.5.1.1 | Estudio del Project del Proyecto | 1h? | 2010-10-04 09:00 | 2010-10-04 10:00 |  | 37.06d | 0d |  | Javier Madeiro | 1h |
| 11 | 1.1.1.5.1.2 | Revisión Técnica | 1.5h? | 2010-10-04 10:00 | 2010-10-04 11:30 | 10 | 37.06d | 0d |  | Alejandro García; Javier Madeiro; Marcos Sander; Juan Ghiringhelli | 6h |
| 12 | 1.1.1.5.1.3 | Conclusiones, proponer acciones correctivas | 1h? | 2010-10-04 11:30 | 2010-10-04 12:30 | 11 | 37.06d | 0d |  | Javier Madeiro | 1h |
| 13 | 1.1.1.5.1.4 | Seguimiento de la RTF | 1h? | 2010-10-04 12:30 | 2010-10-04 13:30 | 12 | 37.4d |  |  | Javier Madeiro | 1h |
| 14 | 1.1.1.5.2 | Revisión de Documentos | 6h? | 2010-10-04 15:30 | 2010-10-04 21:30 | 16 | 37.06d |  |  | Alejandro García; Javier Madeiro | 12h |
| 15 | 1.1.1.6 | Gestión de la Configuración | 1d? | 2010-10-04 09:00 | 2010-10-05 09:00 |  | 36.58d |  |  |  |  |
| 16 | 1.1.1.7 | **Entregables** | 0.27d? | 2010-10-04 09:00 | 2010-10-04 15:30 |  | 37.06d | 0d |  |  | 34h |
| 17 | 1.1.1.7.1 | Documento de evaluación y ajuste del plan de VyV | 2h? | 2010-10-04 09:00 | 2010-10-04 11:00 |  | 37.19d | 0.12d |  | Alejandro García | 2h |
| 18 | 1.1.1.7.2 | Evaluación de la verificación | 2h? | 2010-10-04 09:00 | 2010-10-04 11:00 |  | 37.19d | 0.12d |  | Alejandro García | 2h |
| 19 | 1.1.1.7.3 | Informe de verificación de documento | 2h? | 2010-10-04 09:00 | 2010-10-04 11:00 |  | 37.19d | 0.12d |  | Alejandro García | 2h |
| 20 | 1.1.1.7.4 | Reporte de pruebas | 4h? | 2010-10-04 09:00 | 2010-10-04 13:00 |  | 37.1d | 0.04d |  | Alejandro García | 4h |
| 21 | 1.1.1.7.5 | Documento de evaluación y ajuste del plan de calidad | 2h? | 2010-10-04 09:00 | 2010-10-04 11:00 |  | 37.19d | 0.12d |  | Javier Madeiro | 2h |
| 22 | 1.1.1.7.6 | Informe de revisión de SQA | 2h? | 2010-10-04 09:00 | 2010-10-04 11:00 |  | 37.19d | 0.12d |  | Javier Madeiro | 2h |
| 23 | 1.1.1.7.7 | Informe de RTF | 1.5h? | 2010-10-04 12:30 | 2010-10-04 14:00 | 12 | 37.06d | 0d |  | Javier Madeiro | 1.5h |
| 24 | 1.1.1.7.8 | Materiales para soporte al usuario | 1h? | 2010-10-04 09:00 | 2010-10-04 10:00 |  | 37.23d | 0.17d |  | José Cordero | 1h |
| 25 | 1.1.1.7.9 | Acta de reunión con el director del proyecto | 1h? | 2010-10-04 09:00 | 2010-10-04 10:00 |  | 37.23d | 0.17d |  | Juan Ghiringhelli | 1h |
| 26 | 1.1.1.7.10 | Documento de riesgos | 1h? | 2010-10-04 09:00 | 2010-10-04 10:00 |  | 37.23d | 0.17d |  | Juan Ghiringhelli | 1h |
| 27 | 1.1.1.7.11 | Informe de situación de proyecto | 1h? | 2010-10-04 09:00 | 2010-10-04 10:00 |  | 37.23d | 0.17d |  | Juan Ghiringhelli | 1h |
| 28 | 1.1.1.7.12 | Presentación al director del proyecto | 1h? | 2010-10-04 09:00 | 2010-10-04 10:00 |  | 37.23d | 0.17d |  | Juan Ghiringhelli | 1h |
| 29 | 1.1.1.7.13 | Registro de actividades | 1h? | 2010-10-04 09:00 | 2010-10-04 10:00 |  | 37.23d | 0.17d |  | Juan Ghiringhelli | 1h |
| 30 | 1.1.1.7.14 | Plan de implantación | 1h? | 2010-10-04 09:00 | 2010-10-04 10:00 |  | 37.23d | 0.17d |  | Juan Ghiringhelli; Vicente Acosta | 2h |
| 31 | 1.1.1.7.15 | Modelo de diseño | 1h? | 2010-10-04 09:00 | 2010-10-04 10:00 |  | 37.23d | 0.17d |  | Marcos Sander | 1h |
| 32 | 1.1.1.7.16 | Plan de desarrollo | 1h? | 2010-10-04 09:00 | 2010-10-04 10:00 |  | 37.23d | 0.17d |  | Marcos Sander | 1h |
| 33 | 1.1.1.7.17 | Informe de integración | 1h? | 2010-10-04 09:00 | 2010-10-04 10:00 |  | 37.23d | 0.17d |  | Ignacio Infante | 1h |
| 34 | 1.1.1.7.18 | Plan de integración de la iteración | 1h? | 2010-10-04 09:00 | 2010-10-04 10:00 |  | 37.23d | 0.17d |  | Ignacio Infante | 1h |
| 35 | 1.1.1.7.19 | Informe de verificación unitaria | 0.5h? | 2010-10-04 09:00 | 2010-10-04 09:30 |  | 37.25d | 0.19d |  | Ignacio Infante; Marcos Sander | 1h |
| 36 | 1.1.1.7.20 | Revision por Pares | 1h? | 2010-10-04 09:00 | 2010-10-04 10:00 |  | 37.23d | 0.17d |  | Ignacio Infante; Marcos Sander | 2h |
| 37 | 1.1.1.7.21 | Descripción de la versión | 1h? | 2010-10-04 09:00 | 2010-10-04 10:00 |  | 37.23d | 0.17d |  | Vicente Acosta | 1h |
| 38 | 1.1.1.7.22 | Informe de la línea base del proyecto | 1h? | 2010-10-04 09:00 | 2010-10-04 10:00 |  | 37.23d | 0.17d |  | Vicente Acosta | 1h |
| 39 | 1.1.1.7.23 | Entrega semanal de SQA | 1.5h? | 2010-10-04 14:00 | 2010-10-04 15:30 | 17, 18, 19, 20, 21, 22, 23, 24, 25, 26, 27, 28, 29, 30, 31, 32, 33, 34, 35, 36, 37, 38 | 37.06d |  |  | Javier Madeiro | 1.5h |
| 40 | 1.1.1.8 | Buffer de error | 1h? | 2010-10-09 23:00 | 2010-10-10 00:00 |  | 31.96d |  | finish no earlier than 2010-10-10 00:00 | Alejandro García; Diego Ricca; Federico Andrade; Federico Trinidad; Ignacio Infante; Javier Madeiro; José Cordero; Juan Ghiringhelli; Leticia Vilariño; Marcos Sander; Martín Taruselli; Vicente Acosta | 12h |

| ID | WBS | Task | Type | Duration | Start | Finish | Predecessors | Total slack | Free slack | Constraint | Resources | Work |
| --- | --- | --- | --- | --- | --- | --- | --- | --- | --- | --- | --- | --- |
| 41 | 1.1.2 | **Semana 10** |  | 7.04d? | 2010-10-10 00:00 | 2010-10-17 01:00 | 3 | 25.92d | 0d |  |  | 89h |
| 42 | 1.1.2.1 | Reunión con el Director |  | 1h? | 2010-10-12 00:00 | 2010-10-12 01:00 |  | 30.92d |  | start no earlier than 2010-10-12 00:00 | Alejandro García; Javier Madeiro; Juan Ghiringhelli; Marcos Sander; Vicente Acosta | 5h |
| 43 | 1.1.2.2 | Reunión con el Cliente |  | 1h? | 2010-10-13 00:00 | 2010-10-13 01:00 |  | 29.92d |  | start no earlier than 2010-10-13 00:00 | Alejandro García; Diego Ricca; Federico Andrade; Federico Trinidad; Ignacio Infante; Javier Madeiro; José Cordero; Juan Ghiringhelli; Leticia Vilariño; Marcos Sander; Martín Taruselli; Vicente Acosta | 12h |
| 44 | 1.1.2.3 | Reunión de Integración | milestone | 0d | 2010-10-10 00:00 | 2010-10-10 00:00 |  | 32.96d |  |  | Alejandro García; Diego Ricca; Federico Andrade; Federico Trinidad; Ignacio Infante; Javier Madeiro; José Cordero; Juan Ghiringhelli; Leticia Vilariño; Marcos Sander; Martín Taruselli; Vicente Acosta |  |
| 45 | 1.1.2.4 | Reunión Quincenal |  | 2h? | 2010-10-10 00:00 | 2010-10-10 02:00 |  | 32.88d |  |  | Alejandro García; Diego Ricca; Federico Andrade; Federico Trinidad; Ignacio Infante; Javier Madeiro; José Cordero; Juan Ghiringhelli; Leticia Vilariño; Marcos Sander; Martín Taruselli; Vicente Acosta | 24h |
| 46 | 1.1.2.5 | Diseño / Implementación |  | 1d? | 2010-10-10 00:00 | 2010-10-11 00:00 |  | 31.96d |  |  |  |  |
| 47 | 1.1.2.6 | Verificación |  | 1d? | 2010-10-10 00:00 | 2010-10-11 00:00 |  | 31.96d |  |  |  |  |
| 48 | 1.1.2.7 | Gestión del Proyecto |  | 1d? | 2010-10-10 00:00 | 2010-10-11 00:00 |  | 31.96d |  |  |  |  |
| 49 | 1.1.2.8 | **Gestión de la Calidad** |  | 0.25d? | 2010-10-10 02:00 | 2010-10-10 08:00 |  | 32.62d |  |  |  | 12h |
| 50 | 1.1.2.8.1 | Revisión de Documentos |  | 6h? | 2010-10-10 02:00 | 2010-10-10 08:00 | 52 | 32.62d |  |  | Alejandro García; Javier Madeiro | 12h |
| 51 | 1.1.2.9 | Gestión de la Configuración |  | 1d? | 2010-10-10 00:00 | 2010-10-11 00:00 |  | 31.96d |  |  |  |  |
| 52 | 1.1.2.10 | **Entregables** |  | 0.08d? | 2010-10-10 00:00 | 2010-10-10 02:00 |  | 32.62d | 0d |  |  | 24h |
| 53 | 1.1.2.10.1 | Modelo de casos de prueba |  | 1h? | 2010-10-10 00:00 | 2010-10-10 01:00 |  | 32.62d | 0d |  | Alejandro García | 1h |
| 54 | 1.1.2.10.2 | Plan de verificación de la iteración |  | 1h? | 2010-10-10 00:00 | 2010-10-10 01:00 |  | 32.62d | 0d |  | Alejandro García | 1h |
| 55 | 1.1.2.10.3 | Materiales para capacitación |  | 1h? | 2010-10-10 00:00 | 2010-10-10 01:00 |  | 32.62d | 0d |  | José Cordero | 1h |
| 56 | 1.1.2.10.4 | Materiales para soporte al usuario |  | 1h? | 2010-10-10 00:00 | 2010-10-10 01:00 |  | 32.62d | 0d |  | José Cordero | 1h |
| 57 | 1.1.2.10.5 | Acta de reunión de equipo |  | 1h? | 2010-10-10 00:00 | 2010-10-10 01:00 |  | 32.62d | 0d |  | Juan Ghiringhelli | 1h |
| 58 | 1.1.2.10.6 | Documento de riesgos |  | 1h? | 2010-10-10 00:00 | 2010-10-10 01:00 |  | 32.62d | 0d |  | Juan Ghiringhelli | 1h |
| 59 | 1.1.2.10.7 | Documento de validación con el cliente |  | 1h? | 2010-10-10 00:00 | 2010-10-10 01:00 |  | 32.62d | 0d |  | Juan Ghiringhelli | 1h |
| 60 | 1.1.2.10.8 | Informe de situación de proyecto |  | 1h? | 2010-10-10 00:00 | 2010-10-10 01:00 |  | 32.62d | 0d |  | Juan Ghiringhelli | 1h |
| 61 | 1.1.2.10.9 | Lecciones Aprendidas |  | 1h? | 2010-10-10 00:00 | 2010-10-10 01:00 |  | 32.62d | 0d |  | Juan Ghiringhelli | 1h |
| 62 | 1.1.2.10.10 | Plan de la iteración |  | 1h? | 2010-10-10 00:00 | 2010-10-10 01:00 |  | 32.62d | 0d |  | Juan Ghiringhelli | 1h |
| 63 | 1.1.2.10.11 | Registro de actividades |  | 1h? | 2010-10-10 00:00 | 2010-10-10 01:00 |  | 32.62d | 0d |  | Juan Ghiringhelli | 1h |
| 64 | 1.1.2.10.12 | Modelo de Datos |  | 1h? | 2010-10-10 00:00 | 2010-10-10 01:00 |  | 32.62d | 0d |  | Marcos Sander | 1h |
| 65 | 1.1.2.10.13 | Modelo de diseño |  | 1h? | 2010-10-10 00:00 | 2010-10-10 01:00 |  | 32.62d | 0d |  | Marcos Sander | 1h |
| 66 | 1.1.2.10.14 | Modelo de Implementación |  | 1h? | 2010-10-10 00:00 | 2010-10-10 01:00 |  | 32.62d | 0d |  | Marcos Sander | 1h |
| 67 | 1.1.2.10.15 | Plan de desarrollo |  | 1h? | 2010-10-10 00:00 | 2010-10-10 01:00 |  | 32.62d | 0d |  | Marcos Sander | 1h |
| 68 | 1.1.2.10.16 | Versión beta del producto |  | 1h? | 2010-10-10 00:00 | 2010-10-10 01:00 |  | 32.62d | 0d |  | Marcos Sander; Vicente Acosta | 2h |
| 69 | 1.1.2.10.17 | Ejecutable de la Iteración |  | 1h? | 2010-10-10 00:00 | 2010-10-10 01:00 |  | 32.62d | 0d |  | Ignacio Infante | 1h |
| 70 | 1.1.2.10.18 | Informe de integración |  | 1h? | 2010-10-10 00:00 | 2010-10-10 01:00 |  | 32.62d | 0d |  | Ignacio Infante | 1h |
| 71 | 1.1.2.10.19 | Plan de integración de la iteración |  | 1h? | 2010-10-10 00:00 | 2010-10-10 01:00 |  | 32.62d | 0d |  | Ignacio Infante | 1h |
| 72 | 1.1.2.10.20 | Gestión de cambios |  | 1h? | 2010-10-10 00:00 | 2010-10-10 01:00 |  | 32.62d | 0d |  | Vicente Acosta | 1h |
| 73 | 1.1.2.10.21 | Notas de la versión |  | 1h? | 2010-10-10 00:00 | 2010-10-10 01:00 |  | 32.62d | 0d |  | Vicente Acosta | 1h |
| 74 | 1.1.2.10.22 | Registro de versiones |  | 1h? | 2010-10-10 00:00 | 2010-10-10 01:00 |  | 32.62d | 0d |  | Vicente Acosta | 1h |
| 75 | 1.1.2.10.23 | Entrega semanal de SQA |  | 1h? | 2010-10-10 01:00 | 2010-10-10 02:00 | 53, 54, 55, 56, 57, 58, 59, 60, 61, 62, 63, 64, 65, 66, 67, 68, 69, 70, 71, 72, 73, 74 | 32.62d |  |  | Javier Madeiro | 1h |
| 76 | 1.1.2.11 | Buffer de error |  | 1h? | 2010-10-17 00:00 | 2010-10-17 01:00 |  | 25.92d |  | start no earlier than 2010-10-17 00:00 | Alejandro García; Diego Ricca; Federico Andrade; Federico Trinidad; Ignacio Infante; Javier Madeiro; José Cordero; Juan Ghiringhelli; Leticia Vilariño; Marcos Sander; Martín Taruselli; Vicente Acosta | 12h |

| ID | WBS | Task | Duration | Start | Finish | Predecessors | Total slack | Free slack | Constraint | Resources | Work |
| --- | --- | --- | --- | --- | --- | --- | --- | --- | --- | --- | --- |
| 77 | 1.2 | **Iteración 2** | 21d? | 2010-10-17 01:00 | 2010-11-07 01:00 | 2 | 6d |  |  |  | 220h |
| 78 | 1.2.1 | **Semana 11** | 7d? | 2010-10-17 01:00 | 2010-10-24 01:00 | 41 | 20d |  |  |  | 74h |
| 79 | 1.2.1.1 | Reunión con el Cliente | 2h? | 2010-10-18 00:00 | 2010-10-18 02:00 |  | 25.96d |  | start no earlier than 2010-10-18 00:00 | Alejandro García; Diego Ricca; Ignacio Infante; Javier Madeiro; Juan Ghiringhelli; Marcos Sander | 12h |
| 80 | 1.2.1.2 | Reunión con el Director | 1h? | 2010-10-19 00:00 | 2010-10-19 01:00 |  | 25d |  | start no earlier than 2010-10-19 00:00 | Alejandro García; Javier Madeiro; Juan Ghiringhelli; Marcos Sander; Vicente Acosta | 5h |
| 81 | 1.2.1.3 | Diseño / Implementación | 1d? | 2010-10-17 01:00 | 2010-10-18 01:00 |  | 26d |  |  |  |  |
| 82 | 1.2.1.4 | Verificación | 1d? | 2010-10-17 01:00 | 2010-10-18 01:00 |  | 26d |  |  |  |  |
| 83 | 1.2.1.5 | Gestión del Proyecto | 1d? | 2010-10-17 01:00 | 2010-10-18 01:00 |  | 26d |  |  |  |  |
| 84 | 1.2.1.6 | **Gestión de la Calidad** | 0.21d? | 2010-10-17 01:00 | 2010-10-17 06:00 |  | 26.75d |  |  |  | 11h |
| 85 | 1.2.1.6.1 | **RTF del Código** | 0.21d? | 2010-10-17 01:00 | 2010-10-17 06:00 |  | 26.75d |  |  |  | 11h |
| 86 | 1.2.1.6.1.1 | Estudio del Project del Proyecto | 1h? | 2010-10-17 01:00 | 2010-10-17 02:00 |  | 26.75d | 0d |  | Javier Madeiro | 1h |
| 87 | 1.2.1.6.1.2 | Revisión Técnica | 2h? | 2010-10-17 02:00 | 2010-10-17 04:00 | 86 | 26.75d | 0d |  | Javier Madeiro; Marcos Sander; Juan Ghiringhelli; Ignacio Infante | 8h |
| 88 | 1.2.1.6.1.3 | Conclusiones, proponer acciones correctivas | 1h? | 2010-10-17 04:00 | 2010-10-17 05:00 | 87 | 26.75d | 0d |  | Javier Madeiro | 1h |
| 89 | 1.2.1.6.1.4 | Seguimiento de la RTF | 1h? | 2010-10-17 05:00 | 2010-10-17 06:00 | 88 | 26.79d |  |  | Javier Madeiro | 1h |
| 90 | 1.2.1.7 | Revisión de Documentos | 6h? | 2010-10-17 01:00 | 2010-10-17 07:00 |  | 26.75d |  |  | Alejandro García; Javier Madeiro | 12h |
| 91 | 1.2.1.8 | Gestión de la Configuración | 1d? | 2010-10-17 01:00 | 2010-10-18 01:00 |  | 26d |  |  |  |  |
| 92 | 1.2.1.9 | **Entregables** | 0.25d? | 2010-10-17 01:00 | 2010-10-17 07:00 |  | 26.75d |  |  |  | 22h |
| 93 | 1.2.1.9.1 | Documento de evaluación y ajuste del plan de VyV | 1h? | 2010-10-17 01:00 | 2010-10-17 02:00 |  | 26.92d | 0.17d |  | Alejandro García | 1h |
| 94 | 1.2.1.9.2 | Evaluación de la verificación | 1h? | 2010-10-17 01:00 | 2010-10-17 02:00 |  | 26.92d | 0.17d |  | Alejandro García | 1h |
| 95 | 1.2.1.9.3 | Informe de verificación de documento (Documentación técnica) | 1h? | 2010-10-17 01:00 | 2010-10-17 02:00 |  | 26.92d | 0.17d |  | Alejandro García | 1h |
| 96 | 1.2.1.9.4 | Reporte de pruebas | 1h? | 2010-10-17 01:00 | 2010-10-17 02:00 |  | 26.92d | 0.17d |  | Alejandro García | 1h |
| 97 | 1.2.1.9.5 | Documento de evaluación y ajuste del plan de calidad | 1h? | 2010-10-17 01:00 | 2010-10-17 02:00 |  | 26.92d | 0.17d |  | Javier Madeiro | 1h |
| 98 | 1.2.1.9.6 | Informe de revisión de SQA | 1h? | 2010-10-17 01:00 | 2010-10-17 02:00 |  | 26.92d | 0.17d |  | Javier Madeiro | 1h |
| 99 | 1.2.1.9.7 | Informe de RTF | 1h? | 2010-10-17 05:00 | 2010-10-17 06:00 | 88 | 26.75d | 0d |  | Javier Madeiro | 1h |
| 100 | 1.2.1.9.8 | Materiales para capacitación | 1h? | 2010-10-17 01:00 | 2010-10-17 02:00 |  | 26.92d | 0.17d |  | José Cordero | 1h |
| 101 | 1.2.1.9.9 | Materiales para soporte al usuario | 1h? | 2010-10-17 01:00 | 2010-10-17 02:00 |  | 26.92d | 0.17d |  | José Cordero | 1h |
| 102 | 1.2.1.9.10 | Documento de Evaluacion y Ajustes al Plan del Proyecto | 1h? | 2010-10-17 01:00 | 2010-10-17 02:00 |  | 26.92d | 0.17d |  | Juan Ghiringhelli | 1h |
| 103 | 1.2.1.9.11 | Informe de situación de proyecto | 1h? | 2010-10-17 01:00 | 2010-10-17 02:00 |  | 26.92d | 0.17d |  | Juan Ghiringhelli | 1h |
| 104 | 1.2.1.9.12 | Registro de actividades | 1h? | 2010-10-17 01:00 | 2010-10-17 02:00 |  | 26.92d | 0.17d |  | Juan Ghiringhelli | 1h |
| 105 | 1.2.1.9.13 | Documentación técnica | 1h? | 2010-10-17 01:00 | 2010-10-17 02:00 |  | 26.92d | 0.17d |  | Juan Ghiringhelli; Vicente Acosta | 2h |
| 106 | 1.2.1.9.14 | Plan de desarrollo | 1h? | 2010-10-17 01:00 | 2010-10-17 02:00 |  | 26.92d | 0.17d |  | Marcos Sander | 1h |
| 107 | 1.2.1.9.15 | Ejecutable de la Iteración | 1h? | 2010-10-17 01:00 | 2010-10-17 02:00 |  | 26.92d | 0.17d |  | Marcos Sander | 1h |
| 108 | 1.2.1.9.16 | Informe de verificación unitaria | 0.5h? | 2010-10-17 01:00 | 2010-10-17 01:30 |  | 26.94d | 0.19d |  | Ignacio Infante; Marcos Sander | 1h |
| 109 | 1.2.1.9.17 | Revision por Pares | 1h? | 2010-10-17 01:00 | 2010-10-17 02:00 |  | 26.92d | 0.17d |  | Ignacio Infante; Marcos Sander | 2h |
| 110 | 1.2.1.9.18 | Descripción de la versión | 1h? | 2010-10-17 01:00 | 2010-10-17 02:00 |  | 26.92d | 0.17d |  | Vicente Acosta | 1h |
| 111 | 1.2.1.9.19 | Informe de la línea base del proyecto | 1h? | 2010-10-17 01:00 | 2010-10-17 02:00 |  | 26.92d | 0.17d |  | Vicente Acosta | 1h |
| 112 | 1.2.1.9.20 | Entrega semanal de SQA | 1h? | 2010-10-17 06:00 | 2010-10-17 07:00 | 93, 94, 95, 96, 97, 98, 99, 100, 101, 102, 103, 104, 105, 106, 107, 108, 109, 110, 111 | 26.75d |  |  | Javier Madeiro | 1h |
| 113 | 1.2.1.10 | Buffer de error | 1h? | 2010-10-24 00:00 | 2010-10-24 01:00 |  | 18.96d | 0d | start no earlier than 2010-10-24 00:00 | Alejandro García; Diego Ricca; Federico Andrade; Federico Trinidad; Ignacio Infante; Javier Madeiro; José Cordero; Juan Ghiringhelli; Leticia Vilariño; Marcos Sander; Martín Taruselli; Vicente Acosta | 12h |

| ID | WBS | Task | Duration | Start | Finish | Predecessors | Total slack | Free slack | Constraint | Resources | Work |
| --- | --- | --- | --- | --- | --- | --- | --- | --- | --- | --- | --- |
| 114 | 1.2.2 | **Semana 12** | 7d? | 2010-10-24 01:00 | 2010-10-31 01:00 | 113 | 13d |  |  |  | 90h |
| 115 | 1.2.2.1 | Reunión con el Director | 1h? | 2010-10-26 00:00 | 2010-10-26 01:00 |  | 18d |  | start no earlier than 2010-10-26 00:00 | Alejandro García; Javier Madeiro; Juan Ghiringhelli; Marcos Sander; Vicente Acosta | 5h |
| 116 | 1.2.2.2 | Reunión Quincenal | 2h? | 2010-10-24 01:00 | 2010-10-24 03:00 |  | 19.92d |  |  | Alejandro García; Diego Ricca; Federico Andrade; Federico Trinidad; Ignacio Infante; Javier Madeiro; José Cordero; Juan Ghiringhelli; Leticia Vilariño; Marcos Sander; Martín Taruselli; Vicente Acosta | 24h |
| 117 | 1.2.2.3 | Diseño / Implementación | 1d? | 2010-10-24 01:00 | 2010-10-25 01:00 |  | 19d |  |  |  |  |
| 118 | 1.2.2.4 | Verificación | 1d? | 2010-10-24 01:00 | 2010-10-25 01:00 |  | 19d |  |  |  |  |
| 119 | 1.2.2.5 | Gestión del Proyecto | 1d? | 2010-10-24 01:00 | 2010-10-25 01:00 |  | 19d |  |  |  |  |
| 120 | 1.2.2.6 | **Gestión de la Calidad** | 0.25d? | 2010-10-24 01:00 | 2010-10-24 07:00 |  | 19.75d |  |  |  | 23h |
| 121 | 1.2.2.6.1 | **RTF Planificación del Proyecto** | 0.08d? | 2010-10-24 01:00 | 2010-10-24 03:00 |  | 19.88d |  |  |  | 11h |
| 122 | 1.2.2.6.1.1 | Estudio del Project del Proyecto | 1h? | 2010-10-24 01:00 | 2010-10-24 02:00 |  | 19.96d |  |  | Javier Madeiro | 1h |
| 123 | 1.2.2.6.1.2 | Revisión Técnica | 2h? | 2010-10-24 01:00 | 2010-10-24 03:00 |  | 19.92d |  |  | Javier Madeiro; Marcos Sander; Juan Ghiringhelli; Diego Ricca | 8h |
| 124 | 1.2.2.6.1.3 | Conclusiones, proponer acciones correctivas | 1h? | 2010-10-24 01:00 | 2010-10-24 02:00 |  | 19.88d | 0d |  | Javier Madeiro | 1h |
| 125 | 1.2.2.6.1.4 | Seguimiento de la RTF | 1h? | 2010-10-24 01:00 | 2010-10-24 02:00 |  | 19.96d |  |  | Javier Madeiro | 1h |
| 126 | 1.2.2.6.2 | Revisión de Documentos | 6h? | 2010-10-24 01:00 | 2010-10-24 07:00 |  | 19.75d |  | start no earlier than 2010-10-17 01:00 | Alejandro García; Javier Madeiro | 12h |
| 127 | 1.2.2.7 | Gestión de la Configuración | 1d? | 2010-10-24 01:00 | 2010-10-25 01:00 |  | 19d |  |  |  |  |
| 128 | 1.2.2.8 | **Entregables** | 0.12d? | 2010-10-24 01:00 | 2010-10-24 04:00 |  | 19.88d |  |  |  | 26h |
| 129 | 1.2.2.8.1 | Evaluación de la verificación | 1h? | 2010-10-24 01:00 | 2010-10-24 02:00 |  | 19.92d | 0.04d |  | Alejandro García | 1h |
| 130 | 1.2.2.8.2 | Modelo de casos de prueba | 1h? | 2010-10-24 01:00 | 2010-10-24 02:00 |  | 19.92d | 0.04d |  | Alejandro García | 1h |
| 131 | 1.2.2.8.3 | Plan de verificación de la iteración | 1h? | 2010-10-24 01:00 | 2010-10-24 02:00 |  | 19.92d | 0.04d |  | Alejandro García | 1h |
| 132 | 1.2.2.8.4 | Reporte de pruebas | 1h? | 2010-10-24 01:00 | 2010-10-24 02:00 |  | 19.92d | 0.04d |  | Alejandro García | 1h |
| 133 | 1.2.2.8.5 | Informe de RTF | 1h? | 2010-10-24 02:00 | 2010-10-24 03:00 | 124 | 19.88d | 0d |  | Javier Madeiro | 1h |
| 134 | 1.2.2.8.6 | Materiales para capacitación | 1h? | 2010-10-24 01:00 | 2010-10-24 02:00 |  | 19.92d | 0.04d |  | José Cordero | 1h |
| 135 | 1.2.2.8.7 | Materiales para soporte al usuario | 1h? | 2010-10-24 01:00 | 2010-10-24 02:00 |  | 19.92d | 0.04d |  | José Cordero | 1h |
| 136 | 1.2.2.8.8 | Acta de reunión de equipo | 1h? | 2010-10-24 01:00 | 2010-10-24 02:00 |  | 19.92d | 0.04d |  | Juan Ghiringhelli | 1h |
| 137 | 1.2.2.8.9 | Informe de conclusiones de la fase | 1h? | 2010-10-24 01:00 | 2010-10-24 02:00 |  | 19.92d | 0.04d |  | Juan Ghiringhelli | 1h |
| 138 | 1.2.2.8.10 | Informe de situación de proyecto | 1h? | 2010-10-24 01:00 | 2010-10-24 02:00 |  | 19.92d | 0.04d |  | Juan Ghiringhelli | 1h |
| 139 | 1.2.2.8.11 | Lecciones Aprendidas | 1h? | 2010-10-24 01:00 | 2010-10-24 02:00 |  | 19.92d | 0.04d |  | Juan Ghiringhelli | 1h |
| 140 | 1.2.2.8.12 | Plan de la iteración | 1h? | 2010-10-24 01:00 | 2010-10-24 02:00 |  | 19.92d | 0.04d |  | Juan Ghiringhelli | 1h |
| 141 | 1.2.2.8.13 | Presentación del sistema | 1h? | 2010-10-24 01:00 | 2010-10-24 02:00 |  | 19.92d | 0.04d |  | Juan Ghiringhelli | 1h |
| 142 | 1.2.2.8.14 | Registro de actividades | 1h? | 2010-10-24 01:00 | 2010-10-24 02:00 |  | 19.92d | 0.04d |  | Juan Ghiringhelli | 1h |
| 143 | 1.2.2.8.15 | Plan de implantación | 1h? | 2010-10-24 01:00 | 2010-10-24 02:00 |  | 19.92d | 0.04d |  | Juan Ghiringhelli; Vicente Acosta | 2h |
| 144 | 1.2.2.8.16 | Documentación técnica | 1h? | 2010-10-24 01:00 | 2010-10-24 02:00 |  | 19.92d | 0.04d |  | Marcos Sander | 1h |
| 145 | 1.2.2.8.17 | Plan de desarrollo | 1h? | 2010-10-24 01:00 | 2010-10-24 02:00 |  | 19.92d | 0.04d |  | Marcos Sander | 1h |
| 146 | 1.2.2.8.18 | Versión beta del producto | 1h? | 2010-10-24 01:00 | 2010-10-24 02:00 |  | 19.92d | 0.04d |  | Marcos Sander; Vicente Acosta | 2h |
| 147 | 1.2.2.8.19 | Informe de integración | 1h? | 2010-10-24 01:00 | 2010-10-24 02:00 |  | 19.92d | 0.04d |  | Ignacio Infante | 1h |
| 148 | 1.2.2.8.20 | Descripción de la versión | 1h? | 2010-10-24 01:00 | 2010-10-24 02:00 |  | 19.92d | 0.04d |  | Vicente Acosta | 1h |
| 149 | 1.2.2.8.21 | Gestión de cambios | 1h? | 2010-10-24 01:00 | 2010-10-24 02:00 |  | 19.92d | 0.04d |  | Vicente Acosta | 1h |
| 150 | 1.2.2.8.22 | Notas de la versión | 1h? | 2010-10-24 01:00 | 2010-10-24 02:00 |  | 19.92d | 0.04d |  | Vicente Acosta | 1h |
| 151 | 1.2.2.8.23 | Registro de versiones | 1h? | 2010-10-24 01:00 | 2010-10-24 02:00 |  | 19.92d | 0.04d |  | Vicente Acosta | 1h |
| 152 | 1.2.2.8.24 | Entrega semanal de SQA | 1h? | 2010-10-24 03:00 | 2010-10-24 04:00 | 129, 130, 131, 132, 133, 134, 135, 136, 137, 138, 139, 140, 141, 142, 143, 144, 145, 146, 147, 148, 149, 150, 151 | 19.88d |  |  | Javier Madeiro | 1h |
| 153 | 1.2.2.9 | Buffer de error | 1h? | 2010-10-31 00:00 | 2010-10-31 01:00 |  | 12d | 0d | start no earlier than 2010-10-31 00:00 | Alejandro García; Diego Ricca; Federico Andrade; Federico Trinidad; Ignacio Infante; Javier Madeiro; José Cordero; Juan Ghiringhelli; Leticia Vilariño; Marcos Sander; Martín Taruselli; Vicente Acosta | 12h |

| ID | WBS | Task | Duration | Start | Finish | Predecessors | Total slack | Free slack | Constraint | Resources | Work |
| --- | --- | --- | --- | --- | --- | --- | --- | --- | --- | --- | --- |
| 154 | 1.2.3 | **Semana 13** | 7d? | 2010-10-31 01:00 | 2010-11-07 01:00 | 153 | 6d |  |  |  | 56h |
| 155 | 1.2.3.1 | Reunión con el Cliente | 0.83h? | 2010-11-01 00:00 | 2010-11-01 00:50 |  | 12.01d |  | start no earlier than 2010-11-01 00:00 | Alejandro García; Javier Madeiro; Juan Ghiringhelli; Marcos Sander; Diego Ricca; Ignacio Infante | 5h |
| 156 | 1.2.3.2 | Reunión con el Director | 1h? | 2010-11-02 00:00 | 2010-11-02 01:00 |  | 11d |  | start no earlier than 2010-11-02 00:00 | Alejandro García; Javier Madeiro; Juan Ghiringhelli; Marcos Sander; Vicente Acosta | 5h |
| 157 | 1.2.3.3 | Diseño / Implementación | 1d? | 2010-10-31 01:00 | 2010-11-01 01:00 |  | 12d |  |  |  |  |
| 158 | 1.2.3.4 | Verificación | 1d? | 2010-10-31 01:00 | 2010-11-01 01:00 |  | 12d |  |  |  |  |
| 159 | 1.2.3.5 | Gestión del Proyecto | 1d? | 2010-10-31 01:00 | 2010-11-01 01:00 |  | 12d |  |  |  |  |
| 160 | 1.2.3.6 | **Gestión de la Calidad** | 0.25d? | 2010-10-31 01:00 | 2010-10-31 07:00 |  | 12.75d |  |  |  | 12h |
| 161 | 1.2.3.6.1 | Revisión de Documentos | 6h? | 2010-10-31 01:00 | 2010-10-31 07:00 |  | 12.75d |  | start no earlier than 2010-10-17 01:00 | Alejandro García; Javier Madeiro | 12h |
| 162 | 1.2.3.7 | Gestión de la Configuración | 1d? | 2010-10-31 01:00 | 2010-11-01 01:00 |  | 12d |  |  |  |  |
| 163 | 1.2.3.8 | **Entregables** | 0.08d? | 2010-10-31 01:00 | 2010-10-31 03:00 |  | 12.92d |  |  |  | 22h |
| 164 | 1.2.3.8.1 | Evaluación de la verificación | 1h? | 2010-10-31 01:00 | 2010-10-31 02:00 |  | 12.92d | 0d |  | Alejandro García | 1h |
| 165 | 1.2.3.8.2 | Informe de verificación del sistema | 1h? | 2010-10-31 01:00 | 2010-10-31 02:00 |  | 12.92d | 0d |  | Alejandro García | 1h |
| 166 | 1.2.3.8.3 | Reporte de pruebas | 1h? | 2010-10-31 01:00 | 2010-10-31 02:00 |  | 12.92d | 0d |  | Alejandro García | 1h |
| 167 | 1.2.3.8.4 | Reporte Final de Pruebas de Aceptacion | 1h? | 2010-10-31 01:00 | 2010-10-31 02:00 |  | 12.92d | 0d |  | Alejandro García | 1h |
| 168 | 1.2.3.8.5 | Informe de revisión de SQA | 1h? | 2010-10-31 01:00 | 2010-10-31 02:00 |  | 12.92d | 0d |  | Javier Madeiro | 1h |
| 169 | 1.2.3.8.6 | Materiales para capacitación | 1h? | 2010-10-31 01:00 | 2010-10-31 02:00 |  | 12.92d | 0d |  | José Cordero | 1h |
| 170 | 1.2.3.8.7 | Materiales para soporte al usuario | 1h? | 2010-10-31 01:00 | 2010-10-31 02:00 |  | 12.92d | 0d |  | José Cordero | 1h |
| 171 | 1.2.3.8.8 | Acta de reunión con el director del proyecto | 1h? | 2010-10-31 01:00 | 2010-10-31 02:00 |  | 12.92d | 0d |  | Juan Ghiringhelli | 1h |
| 172 | 1.2.3.8.9 | Informe de situación de proyecto | 1h? | 2010-10-31 01:00 | 2010-10-31 02:00 |  | 12.92d | 0d |  | Juan Ghiringhelli | 1h |
| 173 | 1.2.3.8.10 | Presentación al director del proyecto | 1h? | 2010-10-31 01:00 | 2010-10-31 02:00 |  | 12.92d | 0d |  | Juan Ghiringhelli | 1h |
| 174 | 1.2.3.8.11 | Registro de actividades | 1h? | 2010-10-31 01:00 | 2010-10-31 02:00 |  | 12.92d | 0d |  | Juan Ghiringhelli | 1h |
| 175 | 1.2.3.8.12 | Plan de implantación | 1h? | 2010-10-31 01:00 | 2010-10-31 02:00 |  | 12.92d | 0d |  | Juan Ghiringhelli; Vicente Acosta | 2h |
| 176 | 1.2.3.8.13 | Versión beta del producto | 1h? | 2010-10-31 01:00 | 2010-10-31 02:00 |  | 12.92d | 0d |  | Marcos Sander; Vicente Acosta | 2h |
| 177 | 1.2.3.8.14 | Informe de verificación de integración | 1h? | 2010-10-31 01:00 | 2010-10-31 02:00 |  | 12.92d | 0d |  | Alejandro García; Ignacio Infante | 2h |
| 178 | 1.2.3.8.15 | Revision por Pares | 1h? | 2010-10-31 01:00 | 2010-10-31 02:00 |  | 12.92d | 0d |  | Ignacio Infante; Marcos Sander | 2h |
| 179 | 1.2.3.8.16 | Descripción de la versión | 1h? | 2010-10-31 01:00 | 2010-10-31 02:00 |  | 12.92d | 0d |  | Vicente Acosta | 1h |
| 180 | 1.2.3.8.17 | Informe de la línea base del proyecto | 1h? | 2010-10-31 01:00 | 2010-10-31 02:00 |  | 12.92d | 0d |  | Vicente Acosta | 1h |
| 181 | 1.2.3.8.18 | Entrega semanal de SQA | 1h? | 2010-10-31 02:00 | 2010-10-31 03:00 | 164, 165, 166, 167, 168, 169, 170, 171, 172, 173, 174, 175, 176, 177, 178, 179, 180 | 12.92d |  |  | Javier Madeiro | 1h |
| 182 | 1.2.3.9 | Buffer de error | 1h? | 2010-11-07 00:00 | 2010-11-07 01:00 |  | 6d |  | start no earlier than 2010-11-07 00:00 | Alejandro García; Diego Ricca; Federico Andrade; Federico Trinidad; Ignacio Infante; Javier Madeiro; José Cordero; Juan Ghiringhelli; Leticia Vilariño; Marcos Sander; Martín Taruselli; Vicente Acosta | 12h |

| ID | WBS | Task | Duration | Start | Finish | Predecessors | Total slack | Free slack | Constraint | Resources | Work |
| --- | --- | --- | --- | --- | --- | --- | --- | --- | --- | --- | --- |
| 183 | 2 | **Fase Implantación** | 7d? | 2010-11-07 01:00 | 2010-11-14 01:00 | 1 | 0d |  |  |  | 95h |
| 184 | 2.1 | **Iteración 1** | 7d? | 2010-11-07 01:00 | 2010-11-14 01:00 |  | 0d |  |  |  | 95h |
| 185 | 2.1.1 | **Semana 14** | 7d? | 2010-11-07 01:00 | 2010-11-14 01:00 |  | 0d |  |  |  | 95h |
| 186 | 2.1.1.1 | Reunión con el Cliente | 1h? | 2010-11-08 00:00 | 2010-11-08 01:00 |  | 5.92d |  | start no earlier than 2010-11-08 00:00 | Alejandro García; Diego Ricca; Federico Andrade; Federico Trinidad; Ignacio Infante; Javier Madeiro; José Cordero; Juan Ghiringhelli; Leticia Vilariño; Marcos Sander; Martín Taruselli; Vicente Acosta | 12h |
| 187 | 2.1.1.2 | Reunión con el Director | 1h? | 2010-11-09 00:00 | 2010-11-09 01:00 |  | 4.92d |  | start no earlier than 2010-11-09 00:00 | Alejandro García; Diego Ricca; Federico Andrade; Federico Trinidad; Ignacio Infante; Javier Madeiro; José Cordero; Juan Ghiringhelli; Leticia Vilariño; Marcos Sander; Martín Taruselli; Vicente Acosta | 12h |
| 188 | 2.1.1.3 | Reunión Quincenal | 2h? | 2010-11-09 01:00 | 2010-11-09 03:00 | 186, 187 | 4.92d |  |  | Alejandro García; Diego Ricca; Federico Andrade; Federico Trinidad; Ignacio Infante; Javier Madeiro; José Cordero; Juan Ghiringhelli; Leticia Vilariño; Marcos Sander; Martín Taruselli; Vicente Acosta | 24h |
| 189 | 2.1.1.4 | Diseño / Implementación | 1d? | 2010-11-07 01:00 | 2010-11-08 01:00 |  | 6d |  |  |  |  |
| 190 | 2.1.1.5 | Verificación | 1d? | 2010-11-07 01:00 | 2010-11-08 01:00 |  | 6d |  |  |  |  |
| 191 | 2.1.1.6 | Gestión del Proyecto | 1d? | 2010-11-07 01:00 | 2010-11-08 01:00 |  | 6d |  |  |  |  |
| 192 | 2.1.1.7 | **Gestión de la Calidad** | 0.25d? | 2010-11-07 01:00 | 2010-11-07 07:00 |  | 6.75d |  |  |  | 12h |
| 193 | 2.1.1.7.1 | Revisión de Documentos | 6h? | 2010-11-07 01:00 | 2010-11-07 07:00 |  | 6.75d |  | start no earlier than 2010-10-17 01:00 | Alejandro García; Javier Madeiro | 12h |
| 194 | 2.1.1.8 | Gestión de la Configuración | 1d? | 2010-11-07 01:00 | 2010-11-08 01:00 |  | 6d |  |  |  |  |
| 195 | 2.1.1.9 | **Entregables** | 0.08d? | 2010-11-07 01:00 | 2010-11-07 03:00 |  | 6.92d |  |  |  | 23h |
| 196 | 2.1.1.9.1 | Informe final de verificación | 1h? | 2010-11-07 01:00 | 2010-11-07 02:00 |  | 6.92d | 0d |  | Alejandro García | 1h |
| 197 | 2.1.1.9.2 | Reporte de pruebas | 1h? | 2010-11-07 01:00 | 2010-11-07 02:00 |  | 6.92d | 0d |  | Alejandro García | 1h |
| 198 | 2.1.1.9.3 | Reporte Final de Pruebas de Aceptacion | 1h? | 2010-11-07 01:00 | 2010-11-07 02:00 |  | 6.92d | 0d |  | Alejandro García | 1h |
| 199 | 2.1.1.9.4 | Infome final de calidad | 1h? | 2010-11-07 01:00 | 2010-11-07 02:00 |  | 6.92d | 0d |  | Javier Madeiro | 1h |
| 200 | 2.1.1.9.5 | Informe de revisión de SQA | 1h? | 2010-11-07 01:00 | 2010-11-07 02:00 |  | 6.92d | 0d |  | Javier Madeiro | 1h |
| 201 | 2.1.1.9.6 | Materiales para soporte al usuario | 1h? | 2010-11-07 01:00 | 2010-11-07 02:00 |  | 6.92d | 0d |  | José Cordero | 1h |
| 202 | 2.1.1.9.7 | Acta de reunión de equipo | 1h? | 2010-11-07 01:00 | 2010-11-07 02:00 |  | 6.92d | 0d |  | Juan Ghiringhelli | 1h |
| 203 | 2.1.1.9.8 | Informe de conclusiones de la fase | 1h? | 2010-11-07 01:00 | 2010-11-07 02:00 |  | 6.92d | 0d |  | Juan Ghiringhelli | 1h |
| 204 | 2.1.1.9.9 | Informe de situación de proyecto | 1h? | 2010-11-07 01:00 | 2010-11-07 02:00 |  | 6.92d | 0d |  | Juan Ghiringhelli | 1h |
| 205 | 2.1.1.9.10 | Informe final de proyecto | 1h? | 2010-11-07 01:00 | 2010-11-07 02:00 |  | 6.92d | 0d |  | Juan Ghiringhelli | 1h |
| 206 | 2.1.1.9.11 | Lecciones Aprendidas | 1h? | 2010-11-07 01:00 | 2010-11-07 02:00 |  | 6.92d | 0d |  | Juan Ghiringhelli | 1h |
| 207 | 2.1.1.9.12 | Presentación de cierre de proyecto | 1h? | 2010-11-07 01:00 | 2010-11-07 02:00 |  | 6.92d | 0d |  | Juan Ghiringhelli | 1h |
| 208 | 2.1.1.9.13 | Registro de actividades | 1h? | 2010-11-07 01:00 | 2010-11-07 02:00 |  | 6.92d | 0d |  | Juan Ghiringhelli | 1h |
| 209 | 2.1.1.9.14 | Encuesta de satisfacción del cliente | 1h? | 2010-11-07 01:00 | 2010-11-07 02:00 |  | 6.92d | 0d |  | Ignacio Infante; Juan Ghiringhelli | 2h |
| 210 | 2.1.1.9.15 | Documentación técnica | 1h? | 2010-11-07 01:00 | 2010-11-07 02:00 |  | 6.92d | 0d |  | Marcos Sander | 1h |
| 211 | 2.1.1.9.16 | Versión alfa del producto | 1h? | 2010-11-07 01:00 | 2010-11-07 02:00 |  | 6.92d | 0d |  | Marcos Sander; Vicente Acosta | 2h |
| 212 | 2.1.1.9.17 | Evaluación de satisfacción del cliente | 1h? | 2010-11-07 01:00 | 2010-11-07 02:00 |  | 6.92d | 0d |  | Ignacio Infante; Juan Ghiringhelli | 2h |
| 213 | 2.1.1.9.18 | Informe final de configuración | 1h? | 2010-11-07 01:00 | 2010-11-07 02:00 |  | 6.92d | 0d |  | Vicente Acosta | 1h |
| 214 | 2.1.1.9.19 | Notas de la versión | 1h? | 2010-11-07 01:00 | 2010-11-07 02:00 |  | 6.92d | 0d |  | Vicente Acosta | 1h |
| 215 | 2.1.1.9.20 | Entrega semanal de SQA | 1h? | 2010-11-07 02:00 | 2010-11-07 03:00 | 196, 197, 198, 199, 200, 201, 202, 203, 204, 205, 206, 207, 208, 209, 210, 211, 212, 213, 214 | 6.92d |  |  | Javier Madeiro | 1h |
| 216 | 2.1.1.10 | Buffer de error | 1h? | 2010-11-14 00:00 | 2010-11-14 01:00 |  | 0d |  | start no earlier than 2010-11-14 00:00 | Alejandro García; Diego Ricca; Federico Andrade; Federico Trinidad; Ignacio Infante; Javier Madeiro; José Cordero; Juan Ghiringhelli; Leticia Vilariño; Marcos Sander; Martín Taruselli; Vicente Acosta | 12h |
